# Gantt Preventivo

Schedule from MS Project, 2020-09-01 to 2020-12-23, 4 hours a day.

## Calendars

- Progetto Gestione e Backup: Mon off; Tue 13:15-14:45, 15:00-16:00; Wed 09:05-10:50; Thu 13:15-14:45, 15:00-16:30; Fri 12:30-15:45; Sat-Sun off. Exceptions (off unless hours are given): 2020-11-03 to 2020-11-06 (Vacanze).

## Resources

| Resource |
| --- |
| Pierpaolo Casati |
| PC |

## Schedule

| ID | WBS | Task | Type | Duration | Start | Finish | Predecessors | Total slack | Free slack | Constraint | Resources | Work |
| --- | --- | --- | --- | --- | --- | --- | --- | --- | --- | --- | --- | --- |
| 1 | 1 | **Gestione e backup via web dei DB dei siti internet** |  | 40.44d | 2020-09-01 | 2020-12-23 |  | 0d |  |  |  | 159h |
| 2 | 1.1 | **Anlisi** |  | 3.25d | 2020-09-01 | 2020-09-08 |  | 0.44d |  |  |  | 13h |
| 3 | 1.1.1 | Analisi dominio |  | 4.5h | 2020-09-01 | 2020-09-03 |  | 0.56d | 0d | start no earlier than 2020-09-01 | Pierpaolo Casati | 4.5h |
| 4 | 1.1.2 | Specifica dei requisiti |  | 3h | 2020-09-03 | 2020-09-04 | 3 | 0.56d | 0d |  | Pierpaolo Casati | 3h |
| 5 | 1.1.3 | Pianificazione GANTT |  | 2h | 2020-09-04 | 2020-09-04 | 4 | 0.56d | 0d |  | Pierpaolo Casati | 2h |
| 6 | 1.1.4 | Use case |  | 2h | 2020-09-04 | 2020-09-08 | 5 | 0.56d | 0d |  | Pierpaolo Casati | 2h |
| 7 | 1.1.5 | Analisi dei mezzi |  | 0.5h | 2020-09-08 | 2020-09-08 | 6 | 0.56d | 0d |  | Pierpaolo Casati | 0.5h |
| 8 | 1.1.6 | Analisi software |  | 0.5h | 2020-09-08 | 2020-09-08 | 7 | 0.56d | 0d |  | Pierpaolo Casati | 0.5h |
| 9 | 1.1.7 | Analisi hardware |  | 0.5h | 2020-09-08 | 2020-09-08 | 8 | 0.56d | 0d |  | Pierpaolo Casati | 0.5h |
| 10 | 1.2 | **Progettazione** |  | 3d | 2020-09-09 | 2020-09-16 |  | 0.44d |  |  |  | 12h |
| 11 | 1.2.1 | Design archittetura |  | 3h | 2020-09-09 | 2020-09-10 | 9 | 0.56d | 0d |  | Pierpaolo Casati | 3h |
| 12 | 1.2.2 | Design dati e db |  | 3h | 2020-09-10 | 2020-09-11 | 11 | 0.56d | 0d |  | Pierpaolo Casati | 3h |
| 13 | 1.2.3 | Design interfacce |  | 3h | 2020-09-11 | 2020-09-15 | 12 | 0.56d | 0d |  | Pierpaolo Casati | 3h |
| 14 | 1.2.4 | Design procedurale |  | 3h | 2020-09-15 | 2020-09-16 | 13 | 0.56d | 0d |  | Pierpaolo Casati | 3h |
| 15 | 1.2.5 | Fine progettazione | milestone | 0h | 2020-09-16 | 2020-09-16 | 14 | 0.56d | 0d |  |  |  |
| 16 | 1.3 | **Implementazione** |  | 31.75d | 2020-09-16 | 2020-12-17 |  | 0.44d |  |  |  | 126h |
| 17 | 1.3.1 | Creazione script backup |  | 12h | 2020-09-16 | 2020-09-24 | 15 | 0.56d | 0d |  | Pierpaolo Casati; PC | 12h |
| 18 | 1.3.2 | Creazione file log |  | 12h | 2020-09-24 | 2020-10-01 | 17 | 0.44d | 0d |  | Pierpaolo Casati [50%]; PC | 6h |
| 19 | 1.3.3 | Creazione DB backup in MySQL |  | 10h | 2020-09-24 | 2020-10-01 | 17 | 1.06d | 0.5d |  | Pierpaolo Casati [50%]; PC | 5h |
| 20 | 1.3.4 | Creazione utenti in MySQL |  | 3h | 2020-10-01 | 2020-10-02 | 18, 19 | 0.44d | 0d |  | Pierpaolo Casati; PC | 3h |
| 21 | 1.3.5 | Sistema login |  | 10h | 2020-10-02 | 2020-10-09 | 20 | 0.44d | 0d |  | Pierpaolo Casati; PC | 10h |
| 22 | 1.3.6 | Sistema di email per password provissoria |  | 20h | 2020-10-09 | 2020-10-23 | 21 | 0.44d | 0d |  | Pierpaolo Casati [50%]; PC | 10h |
| 23 | 1.3.7 | Sistema per richiedere password |  | 20h | 2020-10-09 | 2020-10-23 | 21 | 0.44d | 0d |  | Pierpaolo Casati [50%]; PC | 10h |
| 24 | 1.3.8 | Sistema per cambiare permessi utenti dall'applicativo |  | 12h | 2020-10-23 | 2020-10-30 | 22, 23 | 0.44d | 0d |  | Pierpaolo Casati; PC | 12h |
| 25 | 1.3.9 | Sistema modifica, creazione, cancellazione o modificazione DB |  | 12h | 2020-10-30 | 2020-11-17 | 24 | 0.44d | 0d |  | Pierpaolo Casati; PC | 12h |
| 26 | 1.3.10 | Sistema segnale per stato backup |  | 12h | 2020-11-17 | 2020-11-24 | 25 | 0.44d | 0d |  | Pierpaolo Casati; PC | 12h |
| 27 | 1.3.11 | Sistema che manda email per problemi |  | 12h | 2020-11-25 | 2020-12-02 | 26 | 0.44d | 0d |  | Pierpaolo Casati; PC | 12h |
| 28 | 1.3.12 | Sistema ricerca |  | 12h | 2020-12-02 | 2020-12-10 | 27 | 0.44d | 0d | start no earlier than 2020-09-01 | Pierpaolo Casati; PC | 12h |
| 29 | 1.3.13 | Sistema report PDF |  | 10h | 2020-12-10 | 2020-12-17 | 28 | 0.44d | 0d |  | Pierpaolo Casati; PC | 10h |

| ID | WBS | Task | Type | Duration | Start | Finish | Predecessors | Total slack | Constraint | Resources | Work |
| --- | --- | --- | --- | --- | --- | --- | --- | --- | --- | --- | --- |
| 30 | 1.4 | **Integrazione** |  | 2d | 2020-12-17 | 2020-12-22 |  | 0.44d |  |  | 8h |
| 31 | 1.4.1 | Test case |  | 8h | 2020-12-17 | 2020-12-22 | 29 | 0.44d |  | PC; Pierpaolo Casati [50%] | 4h |
| 32 | 1.4.2 | Test integrazione |  | 8h | 2020-12-17 | 2020-12-22 | 29 | 0.44d |  | Pierpaolo Casati [50%]; PC | 4h |
| 33 | 1.5 | **Conclusioni** |  | 40.44d | 2020-09-01 | 2020-12-23 |  | 0d |  |  |  |
| 34 | 1.5.1 | documentazione |  | 161.75h | 2020-09-01 | 2020-12-23 |  | 0d | start no earlier than 2020-09-01 |  |  |
| 35 | 1.5.2 | Fine progetto | milestone | 0h | 2020-12-23 | 2020-12-23 | 31, 32, 34 | 0d |  |  |  |
